# Software Development

Schedule from MS Project, 2014-10-27 to 2015-05-18, A marks actual dates.

## Calendars

- Standard: Mon-Fri 08:00-12:00, 13:00-17:00; Sat-Sun off.

## Resources

| Resource |
| --- |
| Kadra zarządzająca |
| Project Manager |
| Analityk |
| Deweloper |
| Testerzy |
| Trenerzy |
| Pomoc/Helpdesk |
| Deployment |
| 11 |
| Project Support |

## Schedule

| ID | WBS | Task | Type | Duration | Start | Finish | Predecessors | Complete | Remaining | Total slack | Free slack | Resources | Work | Actual work | Sprint |
| --- | --- | --- | --- | --- | --- | --- | --- | --- | --- | --- | --- | --- | --- | --- | --- |
| 1 | 1 | **Analiza, ustalenie wymagań** |  | 15d | 2014-10-27 A | 2014-11-14 |  | 56% | 6.67d |  |  |  | 80h | 40h |  |
| 2 | 1.1 | Przeprowadzenie analizy wymagań |  | 5d | 2014-10-27 A | 2014-10-31 A |  | 100% |  |  |  | Analityk | 40h | 40h |  |
| 3 | 1.2 | Zapisanie wstępnego budżetu |  | 2d | 2014-11-03 | 2014-11-04 | 2 |  |  | 0d |  | Project Manager | 16h |  |  |
| 4 | 1.3 | Przeprowadzenie recencji budżetu/specyfikacji z resztą teamu |  | 4h | 2014-11-05 | 2014-11-05 | 3 |  |  | 0d |  | Project Manager; Analityk | 8h |  |  |
| 5 | 1.4 | Zaplanowanie kalendarza wypuszczania wersji produktu |  | 1d | 2014-11-05 | 2014-11-06 | 4 |  |  | 0d |  | Project Manager | 8h |  |  |
| 6 | 1.5 | Zdobycie zgody na dalsze działania przy zaplanowanym budżecie, kalendarzu I specyfikacji |  | 4h | 2014-11-06 | 2014-11-06 | 5 |  |  | 0d |  | Kadra zarządzająca; Project Manager | 8h |  |  |
| 7 | 1.6 | Analiza zakończona | milestone | 0d | 2014-11-06 | 2014-11-06 | 6 |  |  | 0d |  |  |  |  |  |
| 8 | 2 | **Projektowanie** |  | 14.5d | 2014-11-07 | 2014-11-27 |  |  |  | 50.5d | 0d |  | 120h |  |  |
| 9 | 2.1 | Recenzja wstępnej specyfikacji oprogramowania |  | 2d | 2014-11-07 | 2014-11-10 | 7 |  |  | 50.5d | 0d | Analityk | 16h |  |  |
| 10 | 2.2 | Sporządzenie wymagań funkcjonalnych |  | 5d | 2014-11-11 | 2014-11-17 | 9 |  |  | 50.5d | 0d | Analityk | 40h |  |  |
| 11 | 2.3 | Sporządzenie prototypu na bazie wymagań funkcjonalnych |  | 4d | 2014-11-18 | 2014-11-21 | 10 |  |  | 50.5d | 0d | Analityk | 32h |  |  |
| 12 | 2.4 | Recejzja wymagań funkcjonalnych |  | 2d | 2014-11-24 | 2014-11-25 | 11 |  |  | 50.5d | 0d | Kadra zarządzająca | 16h |  |  |
| 13 | 2.5 | Korekty wymagań funkcjonalnych po spotkaniu z klientem |  | 1d | 2014-11-26 | 2014-11-26 | 12 |  |  | 50.5d | 0d | Kadra zarządzająca | 8h |  |  |
| 14 | 2.6 | Pozywkanie zezwolenia na dalsze prace |  | 4h | 2014-11-27 | 2014-11-27 | 13 |  |  | 50.5d | 0d | Kadra zarządzająca; Project Manager | 8h |  |  |
| 15 | 2.7 | Projektowanie zakończone | milestone | 0d | 2014-11-27 | 2014-11-27 | 14 |  |  | 50.5d | 0d |  |  |  |  |
| 16 | 3 | **Implemementacja** |  | 40.5d | 2014-11-27 | 2015-01-22 | 8 |  |  | 50.5d | 0d |  | 264h |  | Sprint 1 |
| 17 | 3.1 | Review functional specifications |  | 1d | 2014-11-27 | 2014-11-28 | 15 |  |  | 50.5d | 0d | Deweloper | 8h |  |  |
| 18 | 3.2 | Identify modular/tiered design parameters |  | 1d | 2014-11-28 | 2014-12-01 | 17 |  |  | 50.5d | 0d | Deweloper | 8h |  | Sprint 1 |
| 19 | 3.3 | Assign development staff |  | 1d | 2014-12-01 | 2014-12-02 | 18 |  |  | 50.5d | 0d | Deweloper | 8h |  | Sprint 1 |
| 20 | 3.4 | Develop code |  | 30d | 2014-12-02 | 2015-01-13 | 19 |  |  | 50.5d | 0d | Deweloper [50%] | 120h |  | Sprint 1 |
| 21 | 3.5 | Developer testing (primary debugging) |  | 30d | 2014-12-12 | 2015-01-22 | 20FS-7.5% |  |  | 50.5d | 0d | Deweloper [50%] | 120h |  | Sprint 1 |
| 22 | 3.6 | Development complete | milestone | 0d | 2015-01-22 | 2015-01-22 | 21 |  |  | 50.5d | 4d |  |  |  | Sprint 1 |
| 23 | 4 | **Testowanie** |  | 31d | 2015-01-23 | 2015-03-06 | 16 |  |  | 50.5d |  |  | 280h |  | Sprint 1 |
| 24 | 4.1 | Develop unit test plans using product specifications |  | 4d | 2015-01-23 | 2015-01-28 | 15 |  |  | 50.5d | 0d | Testerzy | 32h |  | Sprint 1 |
| 25 | 4.2 | Develop integration test plans using product specifications |  | 4d | 2015-01-23 | 2015-01-28 | 15 |  |  | 77.5d |  | Testerzy | 32h |  | Sprint 1 |

| ID | WBS | Task | Type | Duration | Start | Finish | Predecessors | Total slack | Free slack | Resources | Work | Sprint |
| --- | --- | --- | --- | --- | --- | --- | --- | --- | --- | --- | --- | --- |
| 26 | 4.3 | **Testy jednostkowe** |  | 15d | 2015-01-29 | 2015-02-18 |  | 50.5d |  |  | 120h | Sprint 1 |
| 27 | 4.3.1 | Review modular code |  | 5d | 2015-01-29 | 2015-02-04 | 24, 22 | 50.5d | 0d | Testerzy | 40h | Sprint 1 |
| 28 | 4.3.2 | Test component modules to product specifications |  | 2d | 2015-02-05 | 2015-02-06 | 22, 27 | 50.5d | 0d | Testerzy | 16h | Sprint 1 |
| 29 | 4.3.3 | Identify anomalies to product specifications |  | 3d | 2015-02-09 | 2015-02-11 | 28 | 50.5d | 0d | Testerzy | 24h | Sprint 1 |
| 30 | 4.3.4 | Modify code |  | 3d | 2015-02-12 | 2015-02-16 | 29 | 50.5d | 0d | Testerzy | 24h | Sprint 1 |
| 31 | 4.3.5 | Re-test modified code |  | 2d | 2015-02-17 | 2015-02-18 | 30 | 50.5d | 0d | Testerzy | 16h | Sprint 1 |
| 32 | 4.3.6 | Unit testing complete | milestone | 0d | 2015-02-18 | 2015-02-18 | 31 | 50.5d | 0d |  |  | Sprint 1 |
| 33 | 4.4 | **Testy integracyjne** |  | 12d | 2015-02-19 | 2015-03-06 |  | 50.5d |  |  | 96h | Sprint 1 |
| 34 | 4.4.1 | Test module integration |  | 5d | 2015-02-19 | 2015-02-25 | 32 | 50.5d | 0d | Testerzy | 40h | Sprint 1 |
| 35 | 4.4.2 | Identify anomalies to specifications |  | 2d | 2015-02-26 | 2015-02-27 | 34 | 50.5d | 0d | Testerzy | 16h | Sprint 1 |
| 36 | 4.4.3 | Modify code |  | 3d | 2015-03-02 | 2015-03-04 | 35 | 50.5d | 0d | Testerzy | 24h | Sprint 1 |
| 37 | 4.4.4 | Re-test modified code |  | 2d | 2015-03-05 | 2015-03-06 | 36 | 50.5d | 0d | Testerzy | 16h | Sprint 1 |
| 38 | 4.4.5 | Integration testing complete | milestone | 0d | 2015-03-06 | 2015-03-06 | 37 | 50.5d |  |  |  | Sprint 1 |
| 39 | 5 | **Dokumentacja** |  | 38d | 2014-11-27 | 2015-01-20 | 8 | 84d |  |  | 672h | Sprint 1 |
| 40 | 5.1 | **Dokumentacja** |  | 38d | 2014-11-27 | 2015-01-20 |  | 84d |  |  | 336h | Sprint 1 |
| 41 | 5.1.1 | Develop Help specification |  | 1d | 2014-11-27 | 2014-11-28 | 15 | 101d | 17d | Pomoc/Helpdesk | 8h | Sprint 1 |
| 42 | 5.1.2 | Develop Help system |  | 3w | 2014-12-23 | 2015-01-13 | 41, 20FS-5% | 84d | 0d | Pomoc/Helpdesk | 120h | Sprint 1 |
| 43 | 5.1.3 | Review Help documentation |  | 3d | 2015-01-13 | 2015-01-16 | 42 | 84d | 0d | Pomoc/Helpdesk | 24h | Sprint 1 |
| 44 | 5.1.4 | Incorporate Help documentation feedback |  | 2d | 2015-01-16 | 2015-01-20 | 43 | 84d | 0d | Pomoc/Helpdesk | 16h | Sprint 1 |
| 45 | 5.1.5 | Develop user manuals specifications |  | 2d | 2014-11-27 | 2014-12-01 | 15 | 101d | 16d | Pomoc/Helpdesk | 16h | Sprint 1 |
| 46 | 5.1.6 | Develop user manuals |  | 3w | 2014-12-23 | 2015-01-13 | 45, 20FS-5% | 85d | 0d | Pomoc/Helpdesk | 120h | Sprint 1 |
| 47 | 5.1.7 | Review all user documentation |  | 2d | 2015-01-13 | 2015-01-15 | 46 | 85d | 0d | Pomoc/Helpdesk | 16h | Sprint 1 |
| 48 | 5.1.8 | Incorporate user documentation feedback |  | 2d | 2015-01-15 | 2015-01-19 | 47 | 85d | 1d | Pomoc/Helpdesk | 16h | Sprint 1 |
| 49 | 5.1.9 | Documentation complete | milestone | 0d | 2015-01-20 | 2015-01-20 | 44, 48 | 84d |  |  |  | Sprint 1 |
| 50 | 5.2 | Develop Help specification |  | 1d | 2014-11-27 | 2014-11-28 | 15 | 101d | 17d | Pomoc/Helpdesk | 8h | Sprint 1 |
| 51 | 5.3 | Develop Help system |  | 3w | 2014-12-23 | 2015-01-13 | 50, 20FS-5% | 84d | 0d | Pomoc/Helpdesk | 120h | Sprint 1 |
| 52 | 5.4 | Review Help documentation |  | 3d | 2015-01-13 | 2015-01-16 | 51 | 84d | 0d | Pomoc/Helpdesk | 24h | Sprint 1 |
| 53 | 5.5 | Incorporate Help documentation feedback |  | 2d | 2015-01-16 | 2015-01-20 | 52 | 84d | 0d | Pomoc/Helpdesk | 16h | Sprint 1 |
| 54 | 5.6 | Develop user manuals specifications |  | 2d | 2014-11-27 | 2014-12-01 | 15 | 101d | 16d | Pomoc/Helpdesk | 16h | Sprint 1 |
| 55 | 5.7 | Develop user manuals |  | 3w | 2014-12-23 | 2015-01-13 | 54, 20FS-5% | 85d | 0d | Pomoc/Helpdesk | 120h | Sprint 1 |
| 56 | 5.8 | Review all user documentation |  | 2d | 2015-01-13 | 2015-01-15 | 55 | 85d | 0d | Pomoc/Helpdesk | 16h | Sprint 1 |
| 57 | 5.9 | Incorporate user documentation feedback |  | 2d | 2015-01-15 | 2015-01-19 | 56 | 85d | 1d | Pomoc/Helpdesk | 16h | Sprint 1 |
| 58 | 5.10 | Documentation complete | milestone | 0d | 2015-01-20 | 2015-01-20 | 57, 53 | 84d |  |  |  | Sprint 1 |

| ID | WBS | Task | Type | Duration | Start | Finish | Predecessors | Total slack | Free slack | Resources | Work | Sprint |
| --- | --- | --- | --- | --- | --- | --- | --- | --- | --- | --- | --- | --- |
| 59 | 6 | **Deployment** |  | 5d | 2015-02-12 | 2015-02-18 |  |  |  |  | 40h | Sprint 1 |
| 60 | 6.1 | Determine final deployment strategy |  | 1d | 2015-02-12 | 2015-02-12 |  | -35d | 0d | Deployment | 8h | Sprint 1 |
| 61 | 6.2 | Develop deployment methodology |  | 1d | 2015-02-13 | 2015-02-13 | 60 | -35d | 0d | Deployment | 8h | Sprint 1 |
| 62 | 6.3 | Secure deployment resources |  | 1d | 2015-02-16 | 2015-02-16 | 61 | -35d | 0d | Deployment | 8h | Sprint 1 |
| 63 | 6.4 | Train support staff |  | 1d | 2015-02-17 | 2015-02-17 | 62 | -35d | 0d | Deployment | 8h |  |
| 64 | 6.5 | Deploy software |  | 1d | 2015-02-18 | 2015-02-18 | 63 | -35d | 0d | Deployment | 8h |  |
| 65 | 6.6 | Deployment complete | milestone | 0d | 2015-02-18 | 2015-02-18 | 64 | -35d | 0d |  |  |  |
| 66 | 7 | **Post Implementation Review** |  | 3d | 2015-02-19 | 2015-02-23 |  | 0d |  |  | 24h |  |
| 67 | 7.1 | Document lessons learned |  | 1d | 2015-02-19 | 2015-02-19 | 65, 111 | -35d | 0d | Project Manager | 8h |  |
| 68 | 7.2 | Distribute to team members |  | 1d | 2015-02-20 | 2015-02-20 | 67 | -35d | 0d | Project Manager | 8h |  |
| 69 | 7.3 | Create software maintenance team |  | 1d | 2015-02-23 | 2015-02-23 | 68 | -35d | 0d | Project Manager | 8h |  |
| 70 | 7.4 | Post implementation review complete | milestone | 0d | 2015-02-23 | 2015-02-23 | 69 | -35d | 0d |  |  |  |
| 71 | 8 | Sprint 1 Complete | milestone | 0d | 2015-02-23 | 2015-02-23 | 70 | -35d | 0d |  |  | Sprint1 |
| 72 | 9 | **Implemementacja** |  | 30.75d | 2015-02-24 | 2015-04-07 |  | 0d |  |  | 296h | Sprint 2 |
| 73 | 9.1 | Review functional specifications |  | 1d | 2015-02-24 | 2015-02-24 | 71 | 0d |  | Deweloper | 8h | Sprint 2 |
| 74 | 9.2 | Identify modular/tiered design parameters |  | 4d | 2015-02-25 | 2015-03-04 | 73 | 0d |  | Deweloper | 32h | Sprint 2 |
| 75 | 9.3 | Assign development staff |  | 4d | 2015-03-05 | 2015-03-11 | 74 | 0d |  | Deweloper [50%] | 16h | Sprint 2 |
| 76 | 9.4 | Develop code |  | 15d | 2015-03-12 | 2015-04-01 | 75 | 0d |  | Deweloper | 120h | Sprint 2 |
| 77 | 9.5 | Developer testing (primary debugging) |  | 15d | 2015-03-17 | 2015-04-07 | 76FS-7.5% | 3.25d | 0d | Deweloper | 120h | Sprint 2 |
| 78 | 9.6 | Development complete | milestone | 0d | 2015-04-07 | 2015-04-07 | 77 | 3.25d | 0d |  |  | Sprint 2 |
| 79 | 10 | **Testowanie** |  | 56.25d | 2015-02-24 | 2015-05-13 |  | 3.25d |  |  | 280h | Sprint 2 |
| 80 | 10.1 | Tworzenie planu testów jednostkowych |  | 8d | 2015-02-24 | 2015-03-05 | 71 | 26d | 22.75d | Testerzy [50%] | 32h | Sprint 2 |
| 81 | 10.2 | Tworzenie planu testów czasu wykonania |  | 8d | 2015-02-24 | 2015-03-05 | 71 | 51.5d |  | Testerzy [50%] | 32h | Sprint 2 |
| 82 | 10.3 | **Testy jednostkowe** |  | 13.5d | 2015-04-07 | 2015-04-27 |  | 3.25d |  |  | 120h | Sprint 2 |
| 83 | 10.3.1 | Review modular code |  | 5d | 2015-04-07 | 2015-04-14 | 78, 80 | 3.25d | 0d | Testerzy | 40h | Sprint 2 |
| 84 | 10.3.2 | Test component modules to product specifications |  | 2d | 2015-04-14 | 2015-04-16 | 78, 83 | 3.25d | 0d | Testerzy | 16h | Sprint 2 |
| 85 | 10.3.3 | Identify anomalies to product specifications |  | 1.5d | 2015-04-16 | 2015-04-20 | 84 | 3.25d | 0d | Testerzy; Deweloper | 24h | Sprint 2 |
| 86 | 10.3.4 | Modify code |  | 3d | 2015-04-20 | 2015-04-23 | 85 | 3.25d | 0d | Testerzy | 24h | Sprint 2 |
| 87 | 10.3.5 | Re-test modified code |  | 2d | 2015-04-23 | 2015-04-27 | 86 | 3.25d | 0d | Testerzy | 16h | Sprint 2 |
| 88 | 10.3.6 | Unit testing complete | milestone | 0d | 2015-04-27 | 2015-04-27 | 87 | 3.25d | 0d |  |  | Sprint 2 |

| ID | WBS | Task | Type | Duration | Start | Finish | Predecessors | Total slack | Free slack | Resources | Work | Sprint |
| --- | --- | --- | --- | --- | --- | --- | --- | --- | --- | --- | --- | --- |
| 89 | 10.4 | **Testy integracyjne** |  | 12d | 2015-04-27 | 2015-05-13 |  | 3.25d |  |  | 96h | Sprint 2 |
| 90 | 10.4.1 | Test module integration |  | 5d | 2015-04-27 | 2015-05-04 | 88 | 3.25d | 0d | Testerzy | 40h | Sprint 2 |
| 91 | 10.4.2 | Identify anomalies to specifications |  | 2d | 2015-05-04 | 2015-05-06 | 90 | 3.25d | 0d | Testerzy | 16h | Sprint 2 |
| 92 | 10.4.3 | Modify code |  | 3d | 2015-05-06 | 2015-05-11 | 91 | 3.25d | 0d | Testerzy | 24h | Sprint 2 |
| 93 | 10.4.4 | Re-test modified code |  | 2d | 2015-05-11 | 2015-05-13 | 92 | 3.25d | 0d | Testerzy | 16h | Sprint 2 |
| 94 | 10.4.5 | Integration testing complete | milestone | 0d | 2015-05-13 | 2015-05-13 | 93 | 3.25d |  |  |  | Sprint 2 |
| 95 | 11 | **Dokumentacja** |  | 145.5d | 2014-10-27 | 2015-05-18 |  | 0d |  |  | 328h | Sprint 2 |
| 96 | 11.1 | Dokumentacja |  | 30.5d | 2014-10-27 | 2014-12-08 |  | 115d |  |  |  | Sprint 2 |
| 97 | 11.2 | Develop Help system |  | 6w | 2015-03-23 | 2015-05-04 | 76FS-5% | 0d |  | Project Support [50%] | 120h | Sprint 2 |
| 98 | 11.3 | Review Help documentation |  | 6d | 2015-05-04 | 2015-05-12 | 97 | 0d |  | Project Support [50%] | 24h | Sprint 2 |
| 99 | 11.4 | Incorporate Help documentation feedback |  | 4d | 2015-05-12 | 2015-05-18 | 98 | 0d |  | Project Support [50%] | 16h | Sprint 2 |
| 100 | 11.5 | Develop user manuals specifications |  | 2d | 2015-02-24 | 2015-02-25 | 71 | 26.25d | 8.5d | Pomoc/Helpdesk | 16h | Sprint 2 |
| 101 | 11.6 | Develop user manuals |  | 3w | 2015-03-23 | 2015-04-13 | 76FS-5%, 100 | 21d | 0d | Pomoc/Helpdesk | 120h | Sprint 2 |
| 102 | 11.7 | Review all user documentation |  | 2d | 2015-04-13 | 2015-04-15 | 101 | 21d | 0d | Pomoc/Helpdesk | 16h | Sprint 2 |
| 103 | 11.8 | Incorporate user documentation feedback |  | 2d | 2015-04-15 | 2015-04-17 | 102 | 21d |  | Pomoc/Helpdesk | 16h | Sprint 2 |
| 104 | 11.9 | Documentation complete | milestone | 0d | 2015-05-18 | 2015-05-18 | 99, 103 | 0d |  |  |  | Sprint 2 |
| 105 | 12 | **Deployment** |  | 5d | 2014-10-27 | 2014-10-31 |  | 78d |  |  | 40h | Sprint 2 |
| 106 | 12.1 | Determine final deployment strategy |  | 1d | 2014-10-27 | 2014-10-27 |  | 43d | 0d | Deployment | 8h | Sprint 2 |
| 107 | 12.2 | Develop deployment methodology |  | 1d | 2014-10-28 | 2014-10-28 | 106 | 43d | 0d | Deployment | 8h | Sprint 2 |
| 108 | 12.3 | Secure deployment resources |  | 1d | 2014-10-29 | 2014-10-29 | 107 | 43d | 0d | Deployment | 8h | Sprint 2 |
| 109 | 12.4 | Train support staff |  | 1d | 2014-10-30 | 2014-10-30 | 108 | 43d | 0d | Deployment | 8h | Sprint 2 |
| 110 | 12.5 | Deploy software |  | 1d | 2014-10-31 | 2014-10-31 | 109 | 43d | 0d | Deployment | 8h | Sprint 2 |
| 111 | 12.6 | Deployment complete | milestone | 0d | 2014-10-31 | 2014-10-31 | 110 | 43d |  |  |  | Sprint 2 |
